# SiLAV

How a schedule from Planner changed from version to version. A marks actual dates.

## Version 1 (saved 2016-07-28)

Note of the change: se agrega planificacion

| ID | WBS | Task | Start | Finish | Predecessors |
| --- | --- | --- | --- | --- | --- |
| 1 |  | Identificar problema | 2013-07-30 | 2013-07-30 |  |
| 2 |  | Elaborar estudio de mercado | 2013-07-31 | 2013-08-01 | 1 |
| 3 |  | Proponer solución | 2013-08-02 | 2013-08-02 | 2 |
| 4 |  | Definir alcance del proyecto | 2013-08-03 | 2013-08-03 | 3 |
| 5 |  | Determinar factibilidad | 2013-08-03 | 2013-08-03 | 3 |
| 6 |  | Definir metodología | 2013-08-05 | 2013-08-06 | 5 |
| 7 |  | Adaptar metodología al proyecto | 2013-08-07 | 2013-08-08 | 6 |
| 8 | 8 | **Inicio** | 2013-08-09 | 2013-08-24 |  |
| 9 | 8.1 | **Modelo** | 2013-08-09 | 2013-08-13 |  |
| 10 |  | Definir requerimientos a alto nivel | 2013-08-09 | 2013-08-09 | 7 |
| 11 |  | Realizar modelo de arquitectura a alto nivel | 2013-08-10 | 2013-08-13 | 10 |
| 12 | 8.2 | **Test** | 2013-08-14 | 2013-08-15 |  |
| 13 |  | Definir plan de testing | 2013-08-14 | 2013-08-15 | 11 |
| 14 | 8.3 | **Gestión de configuración** | 2013-08-16 | 2013-08-20 |  |
| 15 |  | Investigar herramientas a utilizar | 2013-08-16 | 2013-08-19 | 13 |
| 16 |  | Preparar entorno de configuración | 2013-08-20 | 2013-08-20 | 15 |
| 17 | 8.4 | **Gestión de proyecto** | 2013-08-21 | 2013-08-24 |  |
| 18 |  | Definir plan de gestión de riesgos | 2013-08-21 | 2013-08-22 | 16 |
| 19 |  | Gestionar riesgos | 2013-08-23 | 2013-08-23 | 18 |
| 20 |  | Verificar cumplimiento de los objetivos de la fase | 2013-08-24 | 2013-08-24 | 19 |
| 21 | 8.5 | **Entorno** | 2013-08-24 | 2013-08-24 |  |
| 22 |  | Instalar y configurar herramientas de software | 2013-08-24 | 2013-08-24 | 19 |
| 23 | 9 | **Elaboración** | 2013-08-26 | 2013-10-15 |  |
| 24 | 9.1 | **Subproyecto AppWeb** | 2013-08-26 | 2013-09-03 |  |
| 25 | 9.1.1 | **Modelo** | 2013-08-26 | 2013-08-28 |  |
| 26 |  | Especificar requerimientos | 2013-08-26 | 2013-08-26 | 20 |
| 27 |  | Realizar modelo de casos de uso | 2013-08-27 | 2013-08-27 | 26 |
| 28 |  | Realizar prototipo de Interfaz de usuario | 2013-08-28 | 2013-08-28 | 27 |
| 29 | 9.1.2 | **Gestión de proyecto** | 2013-08-29 | 2013-09-03 |  |
| 30 |  | Investigar tecnología a utilizar | 2013-08-29 | 2013-09-03 | 28 |
| 31 | 9.2 | **Subproyecto AppMoviles** | 2013-09-04 | 2013-09-12 |  |
| 32 | 9.2.1 | **Modelo** | 2013-09-04 | 2013-09-06 |  |
| 33 |  | Especificar requerimientos | 2013-09-04 | 2013-09-04 | 30 |
| 34 |  | Realizar modelo de casos de uso | 2013-09-05 | 2013-09-05 | 33 |
| 35 |  | Realizar prototipo de interfaz de usuario | 2013-09-06 | 2013-09-06 | 34 |
| 36 | 9.2.2 | **Gestión de proyecto** | 2013-09-07 | 2013-09-12 |  |
| 37 |  | Investigar tecnología a utilizar | 2013-09-07 | 2013-09-12 | 35 |
| 38 | 9.3 | **Subproyecto WebService** | 2013-09-13 | 2013-09-20 |  |
| 39 | 9.3.1 | **Modelo** | 2013-09-13 | 2013-09-14 |  |
| 40 |  | Especificar requerimientos | 2013-09-13 | 2013-09-13 | 37 |
| 41 |  | Realizar modelo de casos de uso | 2013-09-14 | 2013-09-14 | 40 |
| 42 | 9.3.2 | **Gestión de proyecto** | 2013-09-16 | 2013-09-20 |  |
| 43 |  | Investigar tecnología a utilizar | 2013-09-16 | 2013-09-20 | 41 |
| 44 | 9.4 | **Subproyecto AppControlPasaje** | 2013-09-21 | 2013-09-28 |  |
| 45 | 9.4.1 | **Modelo** | 2013-09-21 | 2013-09-23 |  |
| 46 |  | Especificar requerimientos | 2013-09-21 | 2013-09-21 | 43 |
| 47 |  | Realizar modelo de casos de uso | 2013-09-23 | 2013-09-23 | 46 |
| 48 | 9.4.2 | **Gestión de proyecto** | 2013-09-24 | 2013-09-28 |  |
| 49 |  | Investigar tecnología a utilizar | 2013-09-24 | 2013-09-28 | 47 |
| 50 | 9.5 | **Subproyecto AppUsuarios** | 2013-09-30 | 2013-10-02 |  |
| 51 | 9.5.1 | **Modelo** | 2013-09-30 | 2013-10-02 |  |
| 52 |  | Especificar requerimientos | 2013-09-30 | 2013-09-30 | 49 |
| 53 |  | Realizar modelo de casos de uso | 2013-10-01 | 2013-10-01 | 52 |
| 54 |  | Realizar prototipos de interfaz | 2013-10-02 | 2013-10-02 | 53 |
| 55 | 9.6 | **Integración** | 2013-10-03 | 2013-10-15 |  |
| 56 | 9.6.1 | **Modelo** | 2013-10-03 | 2013-10-04 |  |
| 57 |  | Detallar modelo de arquitectura | 2013-10-03 | 2013-10-04 | 54 |
| 58 | 9.6.2 | **Implementación** | 2013-10-05 | 2013-10-08 |  |
| 59 |  | Implementar interfaces de comunicación | 2013-10-05 | 2013-10-08 | 57 |
| 60 | 9.6.3 | **Test** | 2013-10-09 | 2013-10-10 |  |
| 61 |  | Validar arquitectura | 2013-10-09 | 2013-10-09 | 59 |
| 62 |  | Actualizar plan de testing | 2013-10-10 | 2013-10-10 | 61 |
| 63 | 9.6.4 | **Despliegue** | 2013-10-11 | 2013-10-12 |  |
| 64 |  | Realizar plan de despliegue | 2013-10-11 | 2013-10-12 | 62 |
| 65 | 9.6.5 | **Gestión de proyecto** | 2013-10-14 | 2013-10-15 |  |
| 66 |  | Gestionar riesgos | 2013-10-14 | 2013-10-14 | 64 |
| 67 |  | Verificar cumplimiento de objetivos de fase | 2013-10-15 | 2013-10-15 | 66 |
| 68 |  | Actualizar planificación | 2013-10-15 | 2013-10-15 | 66 |
| 69 | 10 | **Construcción** | 2013-10-16 | 2015-11-19 |  |
| 70 | 10.1 | **Iteración 1** | 2013-10-16 | 2014-02-20 |  |

| ID | WBS | Task | Start | Finish | Predecessors | Constraint |
| --- | --- | --- | --- | --- | --- | --- |
| 71 | 10.1.1 | **Subproyecto AppWeb** | 2013-10-16 | 2013-11-09 |  |  |
| 72 | 10.1.1.1 | **Modelo** | 2013-10-16 | 2013-10-24 |  |  |
| 73 |  | Detallar casos de uso | 2013-10-16 | 2013-10-16 | 68 |  |
| 74 |  | Realizar diagramas de estructura | 2013-10-17 | 2013-10-19 | 73 |  |
| 75 |  | Realizar diagramas de comportamiento | 2013-10-21 | 2013-10-23 | 74 |  |
| 76 |  | Actualizar prototipo de interfaz de usuario | 2013-10-24 | 2013-10-24 | 75 |  |
| 77 | 10.1.1.2 | **Implementación** | 2013-10-25 | 2013-11-05 |  |  |
| 78 |  | Generar código | 2013-10-25 | 2013-11-05 | 76 |  |
| 79 | 10.1.1.3 | **Test** | 2013-11-06 | 2013-11-07 |  |  |
| 80 |  | Definir casos de prueba | 2013-11-06 | 2013-11-07 | 78 |  |
| 81 | 10.1.1.4 | **Gestión de proyecto** | 2013-11-08 | 2013-11-09 |  |  |
| 82 |  | Investigar tecnología a utilizar | 2013-11-08 | 2013-11-09 | 80 |  |
| 83 | 10.1.2 | **Subproyecto AppMoviles** | 2013-11-11 | 2013-12-05 |  |  |
| 84 | 10.1.2.1 | **Modelo** | 2013-11-11 | 2013-11-19 |  |  |
| 85 |  | Detallar casos de uso | 2013-11-11 | 2013-11-11 | 82 |  |
| 86 |  | Realizar diagramas de estructura | 2013-11-12 | 2013-11-14 | 85 |  |
| 87 |  | Realizar diagramas de comportamiento | 2013-11-15 | 2013-11-18 | 86 |  |
| 88 |  | Actualizar prototipo de interfaz de usuario | 2013-11-19 | 2013-11-19 | 87 |  |
| 89 | 10.1.2.2 | **Implementación** | 2013-11-20 | 2013-11-30 |  |  |
| 90 |  | Generar código | 2013-11-20 | 2013-11-30 | 88 |  |
| 91 | 10.1.2.3 | **Test** | 2013-12-02 | 2013-12-03 |  |  |
| 92 |  | Definir casos de prueba | 2013-12-02 | 2013-12-03 | 90 |  |
| 93 | 10.1.2.4 | **Gestión de proyecto** | 2013-12-04 | 2013-12-05 |  |  |
| 94 |  | Investigar tecnología a utilizar | 2013-12-04 | 2013-12-05 | 92 |  |
| 95 | 10.1.3 | **Subproyecto WebService** | 2013-12-06 | 2014-01-21 |  |  |
| 96 | 10.1.3.1 | **Modelo** | 2013-12-06 | 2014-01-08 |  |  |
| 97 |  | Detallar casos de uso | 2013-12-06 | 2013-12-06 | 94 |  |
| 98 |  | Realizar diagramas de estructura | 2013-12-07 | 2013-12-10 | 97 |  |
| 99 |  | Realizar diagramas de comportamiento | 2014-01-06 | 2014-01-08 |  | must start on 2014-01-06 |
| 100 | 10.1.3.2 | **Implementación** | 2014-01-09 | 2014-01-16 |  |  |
| 101 |  | Generar código | 2014-01-09 | 2014-01-16 | 99 |  |
| 102 | 10.1.3.3 | **Test** | 2014-01-17 | 2014-01-18 |  |  |
| 103 |  | Definir casos de prueba | 2014-01-17 | 2014-01-18 | 101 |  |
| 104 | 10.1.3.4 | **Gestión de proyecto** | 2014-01-20 | 2014-01-21 |  |  |
| 105 |  | Investigar tecnología a utilizar | 2014-01-20 | 2014-01-21 | 103 |  |
| 106 | 10.1.4 | **Subproyecto AppControlPasaje** | 2014-01-22 | 2014-02-10 |  |  |
| 107 | 10.1.4.1 | **Modelo** | 2014-01-22 | 2014-01-29 |  |  |
| 108 |  | Detallar casos de uso | 2014-01-22 | 2014-01-22 | 105 |  |
| 109 |  | Realizar diagramas de estructura | 2014-01-23 | 2014-01-25 | 108 |  |
| 110 |  | Realizar diagramas de comportamiento | 2014-01-27 | 2014-01-29 | 109 |  |
| 111 | 10.1.4.2 | **Implementación** | 2014-01-30 | 2014-02-06 |  |  |
| 112 |  | Generar código | 2014-01-30 | 2014-02-06 | 110 |  |
| 113 | 10.1.4.3 | **Test** | 2014-02-07 | 2014-02-08 |  |  |
| 114 |  | Definir casos de prueba | 2014-02-07 | 2014-02-08 | 112 |  |
| 115 | 10.1.4.4 | **Gestión de proyecto** | 2014-02-10 | 2014-02-10 |  |  |
| 116 |  | Investigar tecnología a utilizar | 2014-02-10 | 2014-02-10 | 114 |  |
| 117 | 10.1.5 | **Integración** | 2014-02-11 | 2014-02-20 |  |  |
| 118 | 10.1.5.1 | **Modelo** | 2014-02-11 | 2014-02-14 |  |  |
| 119 |  | Actualizar modelo de arquitectura | 2014-02-11 | 2014-02-12 | 116 |  |
| 120 |  | Definir estructura de base de datos | 2014-02-13 | 2014-02-14 | 119 |  |
| 121 | 10.1.5.2 | **Implementación** | 2014-02-15 | 2014-02-15 |  |  |
| 122 |  | Crear base de datos | 2014-02-15 | 2014-02-15 | 120 |  |
| 123 | 10.1.5.3 | **Test** | 2014-02-17 | 2014-02-17 |  |  |
| 124 |  | Actualizar plan de testing | 2014-02-17 | 2014-02-17 | 122 |  |
| 125 | 10.1.5.4 | **Despliegue** | 2014-02-18 | 2014-02-18 |  |  |
| 126 |  | Actualizar plan de despliegue | 2014-02-18 | 2014-02-18 | 124 |  |
| 127 | 10.1.5.5 | **Gestión de proyecto** | 2014-02-19 | 2014-02-20 |  |  |
| 128 |  | Gestionar riesgos | 2014-02-19 | 2014-02-19 | 126 |  |
| 129 |  | Actualizar planificación | 2014-02-20 | 2014-02-20 | 128 |  |
| 130 |  | Interrupción del proyecto | 2014-02-21 | 2014-09-18 | 129 |  |
| 131 | 10.3 | **Iteración 2** | 2014-09-19 | 2015-03-11 |  |  |
| 132 | 10.3.1 | **Subproyecto AppWeb** | 2014-09-19 | 2014-10-25 |  |  |
| 133 | 10.3.1.1 | **Modelo** | 2014-09-19 | 2014-09-24 |  |  |
| 134 |  | Actualizar modelo de casos de uso | 2014-09-19 | 2014-09-19 | 130 |  |
| 135 |  | Actualizar diagramas de estructura | 2014-09-20 | 2014-09-22 | 134 |  |
| 136 |  | Actualizar diagramas de comportamiento | 2014-09-23 | 2014-09-24 | 135 |  |
| 137 | 10.3.1.2 | **Implementación** | 2014-09-25 | 2014-10-17 |  |  |
| 138 |  | Generar código | 2014-09-25 | 2014-10-17 | 136 |  |
| 139 | 10.3.1.3 | **Test** | 2014-10-18 | 2014-10-21 |  |  |
| 140 |  | Definir casos de prueba | 2014-10-18 | 2014-10-20 | 138 |  |

| ID | WBS | Task | Start | Finish | Predecessors | Constraint |
| --- | --- | --- | --- | --- | --- | --- |
| 141 |  | Ejecutar casos de prueba | 2014-10-21 | 2014-10-21 | 140 |  |
| 142 | 10.3.1.4 | **Gestión de proyecto** | 2014-10-22 | 2014-10-25 |  |  |
| 143 |  | Investigar tecnología a utilizar | 2014-10-22 | 2014-10-25 | 141 |  |
| 144 | 10.3.2 | **Subproyecto AppMoviles** | 2014-10-27 | 2014-12-02 |  |  |
| 145 | 10.3.2.1 | **Modelo** | 2014-10-27 | 2014-10-31 |  |  |
| 146 |  | Actualizar modelo de casos de uso | 2014-10-27 | 2014-10-27 | 143 |  |
| 147 |  | Actualizar diagramas de estructura | 2014-10-28 | 2014-10-29 | 146 |  |
| 148 |  | Actualizar diagramas de comportamiento | 2014-10-30 | 2014-10-31 | 147 |  |
| 149 | 10.3.2.2 | **Implementación** | 2014-11-01 | 2014-11-24 |  |  |
| 150 |  | Generar código | 2014-11-01 | 2014-11-24 | 148 |  |
| 151 | 10.3.2.3 | **Test** | 2014-11-25 | 2014-11-27 |  |  |
| 152 |  | Definir casos de prueba | 2014-11-25 | 2014-11-26 | 150 |  |
| 153 |  | Ejecutar casos de prueba | 2014-11-27 | 2014-11-27 | 152 |  |
| 154 | 10.3.2.4 | **Gestión de proyecto** | 2014-11-28 | 2014-12-02 |  |  |
| 155 |  | Investigar tecnología a utilizar | 2014-11-28 | 2014-12-02 | 153 |  |
| 156 | 10.3.3 | **Subproyecto WebService** | 2014-12-03 | 2015-01-12 |  |  |
| 157 | 10.3.3.1 | **Modelo** | 2014-12-03 | 2014-12-08 |  |  |
| 158 |  | Actualizar modelo de casos de uso | 2014-12-03 | 2014-12-03 | 155 |  |
| 159 |  | Actualizar diagramas de estructura | 2014-12-04 | 2014-12-05 | 158 |  |
| 160 |  | Actualizar diagramas de comportamiento | 2014-12-06 | 2014-12-08 | 159 |  |
| 161 | 10.3.3.2 | **Implementación** | 2014-12-09 | 2014-12-25 |  |  |
| 162 |  | Generar código | 2014-12-09 | 2014-12-25 | 160 |  |
| 163 | 10.3.3.3 | **Test** | 2015-01-05 | 2015-01-07 |  |  |
| 164 |  | Definir casos de prueba | 2015-01-05 | 2015-01-06 |  | must start on 2015-01-05 |
| 165 |  | Ejecutar casos de prueba | 2015-01-07 | 2015-01-07 | 164 |  |
| 166 | 10.3.3.4 | **Gestión de proyecto** | 2015-01-08 | 2015-01-12 |  |  |
| 167 |  | Investigar tecnología a utilizar | 2015-01-08 | 2015-01-12 | 165 |  |
| 168 | 10.3.4 | **Subproyecto AppControlPasaje** | 2015-01-13 | 2015-02-11 |  |  |
| 169 | 10.3.4.1 | **Modelo** | 2015-01-13 | 2015-01-17 |  |  |
| 170 |  | Actualizar modelo de casos de uso | 2015-01-13 | 2015-01-13 | 167 |  |
| 171 |  | Actualizar diagramas de comportamiento | 2015-01-14 | 2015-01-15 | 170 |  |
| 172 |  | Actualizar diagramas de comportamiento | 2015-01-16 | 2015-01-17 | 171 |  |
| 173 | 10.3.4.2 | **Implementación** | 2015-01-19 | 2015-02-04 |  |  |
| 174 |  | Generar código | 2015-01-19 | 2015-02-04 | 172 |  |
| 175 | 10.3.4.3 | **Test** | 2015-02-05 | 2015-02-07 |  |  |
| 176 |  | Definir casos de prueba | 2015-02-05 | 2015-02-06 | 174 |  |
| 177 |  | Ejecutar casos de prueba | 2015-02-07 | 2015-02-07 | 176 |  |
| 178 | 10.3.4.4 | **Gestión de proyecto** | 2015-02-09 | 2015-02-11 |  |  |
| 179 |  | Investigar tecnología a utilizar | 2015-02-09 | 2015-02-11 | 177 |  |
| 180 | 10.3.5 | **Integración** | 2015-02-12 | 2015-03-11 |  |  |
| 181 | 10.3.5.1 | **Modelo** | 2015-02-12 | 2015-02-16 |  |  |
| 182 |  | Actualizar modelo de arquitectura | 2015-02-12 | 2015-02-13 | 179 |  |
| 183 |  | Actualizar estructura de base de datos | 2015-02-14 | 2015-02-16 | 182 |  |
| 184 | 10.3.5.2 | **Test** | 2015-02-17 | 2015-02-17 |  |  |
| 185 |  | Actualizar plan de testing | 2015-02-17 | 2015-02-17 | 183 |  |
| 186 | 10.3.5.3 | **Despliegue** | 2015-02-18 | 2015-02-19 |  |  |
| 187 |  | Actualizar plan de despliegue | 2015-02-18 | 2015-02-19 | 185 |  |
| 188 | 10.3.5.4 | **Gestión de proyecto** | 2015-02-20 | 2015-03-05 |  |  |
| 189 |  | Gestionar riesgos | 2015-02-20 | 2015-02-20 | 187 |  |
| 190 |  | Actualizar planificación | 2015-02-21 | 2015-02-21 | 189 |  |
| 191 |  | Investigar tecnología | 2015-02-23 | 2015-03-05 | 190 |  |
| 192 | 10.3.5.5 | **Entorno** | 2015-03-06 | 2015-03-11 |  |  |
| 193 |  | Configurar servidor virtual (VPS) | 2015-03-06 | 2015-03-11 | 191 |  |
| 194 | 10.4 | **Iteración 3** | 2015-03-12 | 2015-07-21 |  |  |
| 195 | 10.4.1 | **Subproyecto AppWeb** | 2015-03-12 | 2015-04-15 |  |  |
| 196 | 10.4.1.1 | **Modelo** | 2015-03-12 | 2015-03-17 |  |  |
| 197 |  | Actualizar modelo de casos de uso | 2015-03-12 | 2015-03-12 | 193 |  |
| 198 |  | Actualizar diagramas de estructura | 2015-03-13 | 2015-03-14 | 197 |  |
| 199 |  | Actualizar diagramas de comportamiento | 2015-03-16 | 2015-03-17 | 198 |  |
| 200 | 10.4.1.2 | **Implementación** | 2015-03-18 | 2015-04-09 |  |  |
| 201 |  | Generar código | 2015-03-18 | 2015-04-09 | 199 |  |
| 202 | 10.4.1.3 | **Test** | 2015-04-10 | 2015-04-13 |  |  |
| 203 |  | Definir casos de prueba | 2015-04-10 | 2015-04-11 | 201 |  |
| 204 |  | Ejecutar casos de prueba | 2015-04-13 | 2015-04-13 | 203 |  |
| 205 | 10.4.1.4 | **Gestión de proyecto** | 2015-04-14 | 2015-04-15 |  |  |
| 206 |  | Investigar tecnología a utilizar | 2015-04-14 | 2015-04-15 | 204 |  |
| 207 | 10.4.2 | **Subproyecto AppMoviles** | 2015-04-16 | 2015-05-20 |  |  |
| 208 | 10.4.2.1 | **Modelo** | 2015-04-16 | 2015-04-21 |  |  |
| 209 |  | Actualizar modelo de casos de uso | 2015-04-16 | 2015-04-16 | 206 |  |
| 210 |  | Actualizar diagramas de estructura | 2015-04-17 | 2015-04-18 | 209 |  |

| ID | WBS | Task | Start | Finish | Predecessors | Complete |
| --- | --- | --- | --- | --- | --- | --- |
| 211 |  | Actualizar diagramas de comportamiento | 2015-04-20 | 2015-04-21 | 210 |  |
| 212 | 10.4.2.2 | **Implementación** | 2015-04-22 | 2015-05-14 |  |  |
| 213 |  | Generar código | 2015-04-22 | 2015-05-14 | 211 |  |
| 214 | 10.4.2.3 | **Test** | 2015-05-15 | 2015-05-18 |  |  |
| 215 |  | Definir casos de prueba | 2015-05-15 | 2015-05-16 | 213 |  |
| 216 |  | Ejecutar casos de prueba | 2015-05-18 | 2015-05-18 | 215 |  |
| 217 | 10.4.2.4 | **Gestión de proyecto** | 2015-05-19 | 2015-05-20 |  |  |
| 218 |  | Investigar tecnología a utilizar | 2015-05-19 | 2015-05-20 | 216 |  |
| 219 | 10.4.3 | **Subproyecto WebService** | 2015-05-21 | 2015-06-13 |  |  |
| 220 | 10.4.3.1 | **Modelo** | 2015-05-21 | 2015-05-26 |  |  |
| 221 |  | Actualizar modelo de casos de uso | 2015-05-21 | 2015-05-21 | 218 | 100% |
| 222 |  | Actualizar diagramas de estructura | 2015-05-22 | 2015-05-23 | 221 |  |
| 223 |  | Actualizar diagramas de comportamiento | 2015-05-25 | 2015-05-26 | 222 |  |
| 224 | 10.4.3.2 | **Implementación** | 2015-05-27 | 2015-06-06 |  |  |
| 225 |  | Generar código | 2015-05-27 | 2015-06-06 | 223 |  |
| 226 | 10.4.3.3 | **Test** | 2015-06-08 | 2015-06-11 |  |  |
| 227 |  | Definir casos de prueba | 2015-06-08 | 2015-06-09 | 225 |  |
| 228 |  | Ejecutar casos de prueba | 2015-06-10 | 2015-06-11 | 227 |  |
| 229 | 10.4.3.4 | **Gestión de proyecto** | 2015-06-12 | 2015-06-13 |  |  |
| 230 |  | Investigar tecnología a utilizar | 2015-06-12 | 2015-06-13 | 228 |  |
| 231 | 10.4.4 | **Subproyecto AppControlPasaje** | 2015-06-15 | 2015-07-07 |  |  |
| 232 | 10.4.4.1 | **Modelo** | 2015-06-15 | 2015-06-19 |  |  |
| 233 |  | Actualizar modelo de casos de uso | 2015-06-15 | 2015-06-15 | 230 |  |
| 234 |  | Actualizar diagramas de estructura | 2015-06-16 | 2015-06-17 | 233 |  |
| 235 |  | Actualizar diagramas de comportamiento | 2015-06-18 | 2015-06-19 | 234 |  |
| 236 | 10.4.4.2 | **Implementación** | 2015-06-20 | 2015-07-01 |  |  |
| 237 |  | Generar código | 2015-06-20 | 2015-07-01 | 235 |  |
| 238 | 10.4.4.3 | **Test** | 2015-07-02 | 2015-07-06 |  |  |
| 239 |  | Definir casos de prueba | 2015-07-02 | 2015-07-03 | 237 |  |
| 240 |  | Ejecutar casos de prueba | 2015-07-04 | 2015-07-06 | 239 |  |
| 241 | 10.4.4.4 | **Gestión de proyecto** | 2015-07-07 | 2015-07-07 |  |  |
| 242 |  | Investigar tecnología a utilizar | 2015-07-07 | 2015-07-07 | 240 |  |
| 243 | 10.4.5 | **Integración** | 2015-07-08 | 2015-07-21 |  |  |
| 244 | 10.4.5.1 | **Modelo** | 2015-07-08 | 2015-07-11 |  |  |
| 245 |  | Actualizar modelo de arquitectura | 2015-07-08 | 2015-07-09 | 242 |  |
| 246 |  | Actualizar estructura de base de datos | 2015-07-10 | 2015-07-11 | 245 |  |
| 247 | 10.4.5.2 | **Test** | 2015-07-13 | 2015-07-16 |  |  |
| 248 |  | Actualizar plan de testing | 2015-07-13 | 2015-07-13 | 246 |  |
| 249 |  | Realizar pruebas de integración | 2015-07-14 | 2015-07-16 | 248 |  |
| 250 | 10.4.5.3 | **Despliegue** | 2015-07-17 | 2015-07-17 |  |  |
| 251 |  | Actualizar plan de despliegue | 2015-07-17 | 2015-07-17 | 249 |  |
| 252 | 10.4.5.4 | **Gestión de proyecto** | 2015-07-18 | 2015-07-21 |  |  |
| 253 |  | Gestionar riesgos | 2015-07-18 | 2015-07-18 | 251 |  |
| 254 |  | Actualizar planificación | 2015-07-20 | 2015-07-21 | 253 |  |
| 255 | 10.5 | **Iteración 4** | 2015-07-22 | 2015-10-19 |  |  |
| 256 | 10.5.1 | **Subproyecto AppWeb** | 2015-07-22 | 2015-08-18 |  |  |
| 257 | 10.5.1.1 | **Implementación** | 2015-07-22 | 2015-08-13 |  |  |
| 258 |  | Generar código | 2015-07-22 | 2015-08-13 | 254 |  |
| 259 | 10.5.1.2 | **Test** | 2015-08-14 | 2015-08-18 |  |  |
| 260 |  | Definir casos de prueba | 2015-08-14 | 2015-08-15 | 258 |  |
| 261 |  | Ejecutar casos de prueba | 2015-08-17 | 2015-08-18 | 260 |  |
| 262 | 10.5.2 | **Subproyecto AppMoviles** | 2015-08-19 | 2015-09-03 |  |  |
| 263 | 10.5.2.1 | **Implementación** | 2015-08-19 | 2015-08-29 |  |  |
| 264 |  | Generar código | 2015-08-19 | 2015-08-29 | 261 |  |
| 265 | 10.5.2.2 | **Test** | 2015-08-31 | 2015-09-03 |  |  |
| 266 |  | Definir casos de prueba | 2015-08-31 | 2015-09-01 | 264 |  |
| 267 |  | Ejecutar casos de prueba | 2015-09-02 | 2015-09-03 | 266 |  |
| 268 | 10.5.3 | **Integración** | 2015-09-04 | 2015-10-19 |  |  |
| 269 | 10.5.3.1 | **Implementación** | 2015-09-04 | 2015-10-08 |  |  |
| 270 |  | Realizar mapeado en OSM | 2015-09-04 | 2015-10-08 | 267 |  |
| 271 | 10.5.3.2 | **Gestión de proyecto** | 2015-10-09 | 2015-10-19 |  |  |
| 272 |  | Investigar tecnología | 2015-10-09 | 2015-10-16 | 270 |  |
| 273 |  | Gestionar riesgos | 2015-10-17 | 2015-10-17 | 272 |  |
| 274 |  | Actualizar planificación | 2015-10-17 | 2015-10-19 | 272 |  |
| 275 | 10.6 | **Iteración 5** | 2015-10-20 | 2015-11-19 |  |  |
| 276 | 10.6.1 | **Subproyecto AppUsuarios** | 2015-10-20 | 2015-11-12 |  |  |
| 277 | 10.6.1.1 | **Modelo** | 2015-10-20 | 2015-10-27 |  |  |
| 278 |  | Actualizar modelo de casos de uso | 2015-10-20 | 2015-10-21 | 274 |  |
| 279 |  | Realizar diagramas de estructura | 2015-10-22 | 2015-10-23 | 278 |  |
| 280 |  | Realizar diagramas de comportamiento | 2015-10-24 | 2015-10-26 | 279 |  |

| ID | WBS | Task | Start | Finish | Predecessors |
| --- | --- | --- | --- | --- | --- |
| 281 |  | Realizar prototipo de interfaz de usuario | 2015-10-27 | 2015-10-27 | 280 |
| 282 | 10.6.1.2 | **Implementación** | 2015-10-28 | 2015-11-07 |  |
| 283 |  | Generar código | 2015-10-28 | 2015-11-07 | 281 |
| 284 | 10.6.1.3 | **Test** | 2015-11-09 | 2015-11-12 |  |
| 285 |  | Definir casos de prueba | 2015-11-09 | 2015-11-10 | 283 |
| 286 |  | Ejecutar casos de prueba | 2015-11-11 | 2015-11-12 | 285 |
| 287 | 10.6.2 | **Integración** | 2015-11-13 | 2015-11-19 |  |
| 288 | 10.6.2.1 | **Test** | 2015-11-13 | 2015-11-16 |  |
| 289 |  | Actualizar plan de testing | 2015-11-13 | 2015-11-13 | 286 |
| 290 |  | Realizar pruebas de integración | 2015-11-14 | 2015-11-16 | 289 |
| 291 | 10.6.2.2 | **Despliegue** | 2015-11-17 | 2015-11-17 |  |
| 292 |  | Actualizar plan de despliegue | 2015-11-17 | 2015-11-17 | 290 |
| 293 | 10.6.2.3 | **Gestión de proyecto** | 2015-11-18 | 2015-11-19 |  |
| 294 |  | Gestionar riesgos | 2015-11-18 | 2015-11-18 | 292 |
| 295 |  | Verificar cumplimiento de fase | 2015-11-19 | 2015-11-19 | 294 |
| 296 |  | Actualizar planificación | 2015-11-19 | 2015-11-19 | 294 |
| 297 |  | Interrupción del proyecto | 2015-11-20 | 2016-04-07 | 296 |
| 298 | 12 | **Transición** | 2016-04-08 | 2016-08-05 |  |
| 299 | 12.1 | **Modelo** | 2016-04-08 | 2016-05-12 |  |
| 300 |  | Finalizar documentación del proyecto | 2016-04-08 | 2016-05-12 | 297 |
| 301 | 12.2 | **Implementación** | 2016-05-13 | 2016-05-30 |  |
| 302 |  | Corregir defectos | 2016-05-13 | 2016-05-30 | 300 |
| 303 | 12.3 | **Test** | 2016-05-31 | 2016-06-02 |  |
| 304 |  | Actualizar plan de testing | 2016-05-31 | 2016-05-31 | 302 |
| 305 |  | Realizar pruebas de sistema | 2016-06-01 | 2016-06-02 | 304 |
| 306 | 12.4 | **Despliegue** | 2016-06-03 | 2016-06-13 |  |
| 307 |  | Realizar paquete de despliegue | 2016-06-03 | 2016-06-04 | 305 |
| 308 |  | Realizar manual de usuario | 2016-06-06 | 2016-06-13 | 307 |
| 309 | 12.5 | **Gestión de proyecto** | 2016-06-14 | 2016-08-05 |  |
| 310 |  | Gestionar riesgos | 2016-06-14 | 2016-06-14 | 308 |
| 311 |  | Verificar cumplimiento de fase | 2016-06-15 | 2016-06-15 | 310 |
| 312 |  | Actualizar planificación | 2016-06-15 | 2016-06-16 | 310 |
| 313 |  | Armar documentación del proyecto | 2016-06-17 | 2016-08-05 | 312 |

## Version 2 (saved 2016-07-28)

Note of the change: se modifica plan de despliegue

Last finish stays 2016-08-05.

Changed:

| ID | Task | Other |
| --- | --- | --- |
| 2 | Evaluar situación de las remiserias | was named Elaborar estudio de mercado |
